# PTI - Plataforma Open Source de Agricultura de Precisión

Schedule from ProjectLibre, 2026-05-04 to 2027-03-26.

## Calendars

- Calidad y documentación: Mon-Fri 08:00-12:00, 13:00-17:00; Sat-Sun off.

## Resources

| Resource |
| --- |
| No Asignado |
| Coordinación y equipo PTI |
| Rol geoespacial y fotogrametría |
| Rol inteligencia artificial |
| Rol backend, datos e integración |
| Rol frontend y visualización |
| Asesoría agronómica |
| Calidad y documentación |

## Schedule

| ID | WBS | Task | Type | Duration | Start | Finish | Predecessors | Resources |
| --- | --- | --- | --- | --- | --- | --- | --- | --- |
| 1 | 1 | **Fase 1. Definición y preparación** |  | 45d? | 2026-05-04 | 2026-07-03 |  |  |
| 2 | 1.1 | Consolidar problema, objetivos, alcance y requisitos |  | 10d | 2026-05-04 | 2026-05-15 |  | Coordinación y equipo PTI [50%]; Calidad y documentación [50%] |
| 3 | 1.2 | Definir criterios de captura RGB y control de calidad |  | 10d | 2026-05-18 | 2026-05-29 | 2 | Rol geoespacial y fotogrametría [50%]; Calidad y documentación [50%] |
| 4 | 1.3 | Diseñar arquitectura, módulos y flujo de información |  | 15d | 2026-05-18 | 2026-06-05 | 2 | Coordinación y equipo PTI [33.33%]; Rol inteligencia artificial [33.33%]; Rol backend, datos e integración [33.33%] |
| 5 | 1.4 | Seleccionar tecnologías y criterios de reemplazo |  | 10d | 2026-06-08 | 2026-06-19 | 4 | Coordinación y equipo PTI [25%]; Rol inteligencia artificial [25%]; Rol backend, datos e integración [25%]; Rol frontend y visualización [25%] |
| 6 | 1.5 | Preparar repositorio, contenedores y convenciones |  | 10d? | 2026-06-22 | 2026-07-03 | 5 | Coordinación y equipo PTI [50%]; Rol backend, datos e integración [50%] |
| 7 | 1.6 | Definir plan de datos, trazabilidad y validación |  | 10d | 2026-06-22 | 2026-07-03 | 3, 5 | Coordinación y equipo PTI [25%]; Rol geoespacial y fotogrametría [25%]; Rol inteligencia artificial [25%]; Calidad y documentación [25%] |
| 8 | 1.7 | Hito: línea base documental consolidada | milestone | 0d | 2026-07-03 | 2026-07-03 | 6, 7 | Coordinación y equipo PTI |
| 9 | 2 | **Fase 2. Datos y fotogrametría** |  | 70d? | 2026-06-01 | 2026-09-04 |  |  |
| 10 | 2.1 | Inventariar y verificar insumos geoespaciales disponibles |  | 10d | 2026-06-01 | 2026-06-12 | 3 | Rol geoespacial y fotogrametría [50%]; Calidad y documentación [50%] |
| 11 | 2.2 | Seleccionar datasets públicos de apoyo |  | 15d? | 2026-06-15 | 2026-07-03 | 10 | Rol geoespacial y fotogrametría [50%]; Rol inteligencia artificial [50%] |
| 12 | 2.3 | Configurar y ejecutar flujo OpenDroneMap de prueba |  | 25d? | 2026-06-15 | 2026-07-17 | 10 | Rol geoespacial y fotogrametría [50%]; Rol backend, datos e integración [50%] |
| 13 | 2.4 | Planificar e incorporar capturas locales |  | 25d? | 2026-06-15 | 2026-07-17 | 3, 10 | Rol geoespacial y fotogrametría [50%]; Asesoría agronómica [50%] |
| 14 | 2.5 | Definir taxonomía y protocolo de etiquetado en CVAT |  | 15d? | 2026-07-06 | 2026-07-24 | 11 | Rol geoespacial y fotogrametría [33.33%]; Rol inteligencia artificial [33.33%]; Asesoría agronómica [33.33%] |
| 15 | 2.6 | Etiquetar y balancear dataset inicial |  | 30d? | 2026-07-27 | 2026-09-04 | 13, 14 | Rol geoespacial y fotogrametría [33.33%]; Rol inteligencia artificial [33.33%]; Asesoría agronómica [33.33%] |
| 16 | 2.7 | Hito: ortomosaico reproducible y dataset v1 | milestone | 0d? | 2026-09-04 | 2026-09-04 | 12, 15 | Coordinación y equipo PTI [33.33%]; Rol geoespacial y fotogrametría [33.33%]; Rol inteligencia artificial [33.33%] |
| 17 | 3 | **Fase 3. Modelos y análisis geoespacial** |  | 85d? | 2026-07-20 | 2026-11-13 |  |  |
| 18 | 3.1 | Preparar pipeline de tiles y dataset |  | 15d? | 2026-07-20 | 2026-08-07 | 11, 12 | Rol geoespacial y fotogrametría [33.33%]; Rol inteligencia artificial [33.33%]; Rol backend, datos e integración [33.33%] |
| 19 | 3.2 | Entrenar modelo base de detección |  | 25d? | 2026-08-10 | 2026-09-11 | 18 | Rol inteligencia artificial |
| 20 | 3.3 | Entrenar y comparar segmentación |  | 25d? | 2026-08-10 | 2026-09-11 | 18 | Rol inteligencia artificial |
| 21 | 3.4 | Calcular ExG, VARI, GLI y MGRVI |  | 20d? | 2026-08-10 | 2026-09-04 | 12, 18 | Rol geoespacial y fotogrametría [50%]; Rol inteligencia artificial [50%] |
| 22 | 3.5 | Georreferenciar detecciones y sectorizar parcelas |  | 20d? | 2026-09-14 | 2026-10-09 | 19, 21 | Rol geoespacial y fotogrametría [33.33%]; Rol inteligencia artificial [33.33%]; Rol backend, datos e integración [33.33%] |
| 23 | 3.6 | Evaluar modelos y seleccionar candidato |  | 30d? | 2026-09-14 | 2026-10-23 | 19, 20 | Rol inteligencia artificial [50%]; Calidad y documentación [50%] |
| 24 | 3.7 | Generar mapas de presencia y densidad |  | 15d? | 2026-10-26 | 2026-11-13 | 22, 23 | Rol geoespacial y fotogrametría [50%]; Rol inteligencia artificial [50%] |
| 25 | 3.8 | Hito: modelo candidato y mapas temáticos | milestone | 0d? | 2026-11-13 | 2026-11-13 | 23, 24 | Coordinación y equipo PTI [33.33%]; Rol geoespacial y fotogrametría [33.33%]; Rol inteligencia artificial [33.33%] |

Notes:
- 1: Línea base del proyecto: alcance, requisitos, arquitectura, entorno y plan de datos.
- 2: Realizado: puntos 1 a 11 consolidados y requisitos tratados como fuente vinculante.
- 3: Realizado a nivel documental. La validación en campo permanece pendiente.
- 4: Realizado a nivel de diseño: ingesta, fotogrametría, IA, geoespacial, reglas, API, dashboard y persistencia.
- 5: Realizado a nivel de planificación; las versiones se fijarán después de comprobar compatibilidad.
- 6: Repositorio disponible. El entorno reproducible completo debe verificarse durante la implementación.
- 7: Realizado a nivel documental: fuentes, métricas, riesgos, hitos y criterios de cierre.
- 8: Hito completado. No implica que el prototipo técnico esté implementado.
- 9: Preparación de insumos, ortomosaicos y dataset inicial.
- 10: Realizado: archivos TIFF/COG y auxiliares localizados. La disponibilidad no equivale a procesamiento validado.
- 11: Pendiente: evaluar licencia, clases, resolución y semejanza con caña de azúcar local.
- 12: Pendiente: generar un ortomosaico reproducible y registrar parámetros, tiempos y errores.
- 13: Pendiente y condicionado al acceso a lotes o imágenes locales.
- 14: Pendiente: reglas para cajas y máscaras, control de calidad y versionado.
- 15: Pendiente: etiquetado incremental, particiones de entrenamiento/validación/prueba y control por clase.
- 16: Criterio de cierre de la fase 2.
- 17: Entrenamiento, comparación, georreferenciación, sectorización e índices visibles.
- 18: Pendiente: recorte, normalización, metadatos espaciales y control de fuga entre particiones.
- 19: Pendiente: registrar experimentos y métricas en MLflow.
- 20: Pendiente: evaluar segmentación cuando los datos etiquetados lo permitan.
- 21: Pendiente: índices visibles calculables con RGB; no presentar NDVI de dron RGB.
- 22: Pendiente: asociar resultados a geometrías, sectores configurables y métricas de densidad.
- 23: Pendiente: mAP, precisión, recall, IoU cuando corresponda, errores por clase y limitaciones.
- 24: Pendiente: productos geoespaciales verificables y exportables.
- 25: Criterio de cierre de la fase 3. Meta de mAP@0.5 >= 0,75 sujeta a medición.

| ID | WBS | Task | Type | Duration | Start | Finish | Predecessors | Resources |
| --- | --- | --- | --- | --- | --- | --- | --- | --- |
| 26 | 4 | **Fase 4. Integración y reglas** |  | 115d? | 2026-09-07 | 2027-02-12 |  |  |
| 27 | 4.1 | Integrar capas satelitales, climáticas y edafoclimáticas |  | 22d? | 2026-09-07 | 2026-10-06 | 21 | Rol geoespacial y fotogrametría [50%]; Rol backend, datos e integración [50%] |
| 28 | 4.2 | Implementar persistencia PostGIS y almacenamiento de objetos |  | 25d? | 2026-10-12 | 2026-11-13 | 4, 22 | Rol backend, datos e integración |
| 29 | 4.3 | Implementar motor de reglas agronómicas editable |  | 25d? | 2026-10-12 | 2026-11-13 | 22, 27 | Rol backend, datos e integración [50%]; Asesoría agronómica [50%] |
| 30 | 4.4 | Implementar API REST y contratos |  | 20d? | 2026-11-16 | 2026-12-11 | 28 | Rol backend, datos e integración |
| 31 | 4.5 | Integrar pipeline imagen-resultados-prescripción |  | 30d? | 2026-12-14 | 2027-01-22 | 24, 29, 30 | Rol geoespacial y fotogrametría [25%]; Rol inteligencia artificial [25%]; Rol backend, datos e integración [25%]; Asesoría agronómica [25%] |
| 32 | 4.6 | Medir rendimiento, resiliencia y manejo de fallas |  | 15d? | 2027-01-25 | 2027-02-12 | 31 | Rol backend, datos e integración [50%]; Calidad y documentación [50%] |
| 33 | 4.7 | Hito: pipeline integrado con reglas y API | milestone | 0d? | 2027-02-12 | 2027-02-12 | 31, 32 | Coordinación y equipo PTI [33.33%]; Rol backend, datos e integración [33.33%]; Asesoría agronómica [33.33%] |
| 34 | 5 | **Fase 5. Dashboard y validación integral** |  | 75d? | 2026-12-14 | 2027-03-26 |  |  |
| 35 | 5.1 | Implementar dashboard geoespacial con Leaflet |  | 25d? | 2026-12-14 | 2027-01-15 | 30 | Rol frontend y visualización |
| 36 | 5.2 | Implementar filtros y exportación de mapas y datos |  | 15d? | 2027-01-18 | 2027-02-05 | 30, 35 | Rol backend, datos e integración [50%]; Rol frontend y visualización [50%] |
| 37 | 5.3 | Ejecutar pruebas funcionales y de integración |  | 20d? | 2027-01-25 | 2027-02-19 | 31, 35 | Rol backend, datos e integración [33.33%]; Rol frontend y visualización [33.33%]; Calidad y documentación [33.33%] |
| 38 | 5.4 | Validar precisión, calidad espacial y rendimiento |  | 15d? | 2027-02-22 | 2027-03-12 | 32, 37 | Rol geoespacial y fotogrametría [33.33%]; Rol inteligencia artificial [33.33%]; Calidad y documentación [33.33%] |
| 39 | 5.5 | Realizar revisión agronómica de reglas y prescripciones |  | 15d? | 2027-02-08 | 2027-02-26 | 29, 36 | Asesoría agronómica |
| 40 | 5.6 | Completar memoria técnica, manuales y anexos |  | 20d? | 2027-02-22 | 2027-03-19 | 36, 37 | Coordinación y equipo PTI [50%]; Calidad y documentación [50%] |
| 41 | 5.7 | Preparar demostración y presentación final |  | 10d? | 2027-03-15 | 2027-03-26 | 38, 39 | Coordinación y equipo PTI [33.33%]; Rol frontend y visualización [33.33%]; Calidad y documentación [33.33%] |
| 42 | 5.8 | Hito: prototipo validado y documentación final | milestone | 0d? | 2027-03-26 | 2027-03-26 | 38, 39, 40, 41 | Coordinación y equipo PTI |

Notes:
- 26: Integración de datos externos, persistencia, reglas agronómicas, API y pipeline.
- 27: Pendiente: Copernicus/Sentinel-2, Open-Meteo, NASA POWER y SMAP como contexto; tolerar indisponibilidad externa.
- 28: Pendiente: parcelas, sectores, geometrías, ejecuciones, métricas, archivos y trazabilidad.
- 29: Pendiente: reglas declarativas, versionadas y auditables; requieren revisión agronómica.
- 30: Pendiente: carga, ejecución, consulta, filtros, estado, resultados y exportación.
- 31: Pendiente: recorrido completo y trazable desde los insumos hasta la prescripción de prueba.
- 32: Pendiente: tiempo por etapa, reintentos, validación de entradas y degradación ante fallas externas.
- 33: Criterio de cierre de la fase 4.
- 34: Interfaz, exportación, pruebas, validación, documentación y cierre.
- 35: Pendiente: mapa, selección de parcelas/sectores, capas, estados y consulta de resultados.
- 36: Pendiente: exportaciones coherentes con los formatos definidos en los requisitos.
- 37: Pendiente: trazabilidad RF/RNF, casos positivos, errores y evidencia reproducible.
- 38: Pendiente: medir metas; no presentar reducciones de herbicida ni precisión como resultados antes de validar.
- 39: Pendiente y condicionado a disponibilidad de revisión profesional.
- 40: Pendiente: completar puntos 12 a 15 y 17 únicamente con evidencia real.
- 41: Pendiente: demostración del prototipo, resultados, limitaciones y trabajo futuro.
- 42: Hito final. Incluye trazabilidad de requisitos y registro explícito de limitaciones.
